# WBS-202005027

How a schedule from MS Project changed from version to version. A marks actual dates.

## Version 1 (saved 2020-06-01, file WBS-202005027.mpp)

Note of the change: Update Plan

| ID | WBS | Task | Duration | Start | Finish | Predecessors | Complete | Total float | Constraint |
| --- | --- | --- | --- | --- | --- | --- | --- | --- | --- |
| 1 | 1 | **Project Planning** | 1d? | 2020-03-04 | 2020-03-04 |  |  | 0d |  |
| 2 | 1.1 | **High Level System Design** | 1d? | 2020-03-04 | 2020-03-04 |  |  | 0d |  |
| 3 |  | Application Design | 1d | 2020-03-04 | 2020-03-04 |  |  |  |  |
| 4 |  | Cloud/Infra Design | 1d? | 2020-03-04 | 2020-03-04 |  |  |  |  |
| 5 | 1.2 | **Create PJ Plan Document** | 1d | 2020-03-04 | 2020-03-04 |  |  | 0d |  |
| 6 |  | Project Overview（Objective・Goal） | 1d | 2020-03-04 | 2020-03-04 |  |  |  |  |
| 7 |  | Scope | 1d | 2020-03-04 | 2020-03-04 |  |  |  |  |
| 8 |  | Cost | 1d | 2020-03-04 | 2020-03-04 |  |  |  |  |
| 9 |  | Schedule | 1d | 2020-03-04 | 2020-03-04 |  |  |  |  |
| 10 |  | Project Structure | 1d | 2020-03-04 | 2020-03-04 |  |  |  |  |
| 11 |  | Quality Management | 1d | 2020-03-04 | 2020-03-04 |  |  |  |  |
| 12 |  | Communication Plan | 1d | 2020-03-04 | 2020-03-04 |  |  |  |  |
| 13 |  | Risk Management | 1d | 2020-03-04 | 2020-03-04 |  |  |  |  |
| 14 | 1.3 | **PJ Plan Document Review** | 1d? | 2020-03-04 | 2020-03-04 |  |  | 0d |  |
| 15 |  | Review Sheet | 1d? | 2020-03-04 | 2020-03-04 |  |  |  |  |
| 16 | 2 | **Technical Investigation** | 62d? | 2020-01-21 A | 2020-04-15 |  | 83% | 0d |  |
| 17 | 2.1 | **Knowledge Sharing** | 12d | 2020-01-21 A | 2020-02-05 A |  | 100% |  |  |
| 18 |  | Discuss Realization Method of SCORELINK SaaS | 0d | 2020-01-21 A | 2020-01-21 A |  | 100% |  |  |
| 19 |  | SL Technical Session | 1d | 2020-02-05 A | 2020-02-05 A |  | 100% |  |  |
| 20 | 2.2 | **Compiling code and analysis code** | 7d | 2020-03-16 A | 2020-03-24 A |  | 100% |  |  |
| 21 |  | Compile Code | 4d | 2020-03-16 A | 2020-03-19 A |  | 100% |  |  |
| 22 |  | Analysis Code | 4d | 2020-03-19 A | 2020-03-24 A |  | 100% |  |  |
| 23 | 2.3 | **Front-End Investigation** | 23d | 2020-03-16 A | 2020-04-15 A |  | 100% |  |  |
| 24 | 2.3.1 | **Display Tiff Image (Alternative of Leadtools)** | 13d | 2020-03-16 A | 2020-04-01 |  | 100% |  |  |
| 25 | 2.3.1.1 | **Development POC** | 13d | 2020-03-16 A | 2020-04-01 |  | 100% |  |  |
| 26 |  | View image | 2d | 2020-03-16 A | 2020-03-17 A |  | 100% |  |  |
| 27 |  | Zoom | 2d | 2020-03-18 A | 2020-03-19 A | 26 | 100% |  |  |
| 28 |  | Rotate Page | 2d | 2020-03-20 A | 2020-03-23 A | 27 | 100% |  |  |
| 29 |  | Check 3rd Party Cost | 1d | 2020-03-16 A | 2020-03-16 A |  | 100% |  |  |
| 30 | 2.3.2 | **Range Specification (Replace VB Power Pack)** | 22d | 2020-03-17 A | 2020-04-15 A |  | 100% |  |  |
| 31 | 2.3.2.1 | **Development POC (Jquery)** | 22d | 2020-03-17 A | 2020-04-15 A |  | 100% |  |  |
| 32 |  | Reseach JQuery | 7d | 2020-03-17 A | 2020-03-25 A |  | 100% |  |  |
| 33 |  | Crop Image | 2d | 2020-04-01 A | 2020-04-02 A |  | 100% |  | finish no earlier than 2020-04-01 |
| 34 |  | Save Crop Area | 3d | 2020-04-13 A | 2020-04-15 A | 33 | 100% |  | finish no earlier than 2020-04-15 |
| 35 | 2.4 | **Back-End Investigation** | 18d? | 2020-03-23 A | 2020-04-15 A |  | 100% |  |  |
| 36 | 2.4.1 | **Spread Sheet** | 18d? | 2020-03-23 A | 2020-04-15 A |  | 100% |  |  |
| 37 | 2.4.1.1 | **Development POC** | 11d? | 2020-04-01 | 2020-04-15 A |  | 100% |  |  |
| 38 |  | Reseach and develop | 3d | 2020-03-23 A | 2020-03-25 A |  | 100% |  |  |
| 39 |  | Display OCR Result | 8d | 2020-03-25 A | 2020-04-03 A |  | 100% |  | finish no earlier than 2020-04-03 |
| 40 |  | Modify Value | 3d? | 2020-04-13 A | 2020-04-15 A |  | 100% |  |  |
| 41 |  | Merge Cell | 3d | 2020-04-13 A | 2020-04-15 A |  | 100% |  |  |
| 42 | 2.5 | **Integration With Existing Scorelink Module** | 10d | 2020-03-23 A | 2020-04-03 |  | 50% | 0d |  |
| 43 |  | Create solution diagram | 9d | 2020-03-23 A | 2020-04-02 A |  | 100% |  |  |
| 44 |  | Discuss with TIS to confirm | 9d | 2020-03-24 A | 2020-04-03 |  |  |  |  |
| 45 | 2.6 | **Cloud Infra struture** | 2d | 2020-03-23 A | 2020-03-24 |  | 33% | 0d |  |
| 46 |  | Azure Cloud Infra Structure | 1d | 2020-03-23 A | 2020-03-23 A |  | 100% |  |  |
| 47 |  | Compare Cloud Infrastructure | 2d | 2020-03-23 | 2020-03-24 |  |  |  |  |
| 48 | 3 | **Requirement Definition** | 10d | 2020-04-01 | 2020-04-14 |  |  |  |  |
| 49 | 3.1 | **Business Requirement** | 10d | 2020-04-01 | 2020-04-14 |  |  |  |  |
| 50 |  | Business Flow | 1d | 2020-04-01 | 2020-04-01 |  |  |  |  |
| 51 |  | Use Case Diagram | 1d? | 2020-04-01 | 2020-04-01 |  |  |  |  |
| 52 | 3.2 | **Functional Requirement** | 8d | 2020-04-03 | 2020-04-14 |  |  |  |  |
| 53 |  | System Overview Diagram | 1d? | 2020-04-03 | 2020-04-03 |  |  |  |  |
| 54 |  | Functions List | 1d | 2020-04-03 | 2020-04-03 |  |  |  |  |
| 55 |  | Functional Overview | 1d | 2020-04-03 | 2020-04-03 |  |  |  |  |
| 56 | 3.3 | **Non-Functional Requirement** | 2d | 2020-04-13 | 2020-04-14 |  |  |  |  |
| 57 |  | Quality and Performance Requirements | 1d? | 2020-04-13 | 2020-04-13 |  |  |  |  |
| 58 |  | Security Requirement | 1d | 2020-04-13 | 2020-04-13 |  |  |  |  |
| 59 |  | Operational Requirements | 1d | 2020-04-13 | 2020-04-13 |  |  |  |  |
| 60 | 3.4 | **Completion Judgment Review** | 0d | 2020-04-14 | 2020-04-14 |  |  |  |  |
| 61 |  | Review Sheet | 0d | 2020-04-14 | 2020-04-14 |  |  |  |  |
| 62 | 4 | **Functional Design (External Design)** | 10d | 2020-04-17 | 2020-04-30 |  |  |  |  |
| 63 | 4.1 | **System Architectural Design** | 1d? | 2020-04-17 | 2020-04-17 |  |  | 9d |  |
| 64 |  | Hardware Configuration Diagram | 1d? | 2020-04-17 | 2020-04-17 |  |  | 9d |  |
| 65 |  | Software Configuration Diagram | 1d? | 2020-04-17 | 2020-04-17 |  |  | 9d |  |
| 66 |  | Network Configuration Diagram | 1d? | 2020-04-17 | 2020-04-17 |  |  | 9d |  |
| 67 |  | Application Function Design | 1d? | 2020-04-17 | 2020-04-17 |  |  | 9d |  |
| 68 | 4.1.5 | **Design Document Review** | 1d? | 2020-04-17 | 2020-04-17 |  |  | 9d |  |
| 69 |  | Review Sheet | 1d? | 2020-04-17 | 2020-04-17 |  |  | 9d |  |
| 70 | 4.2 | **Application Functional Design** | 1d? | 2020-04-17 | 2020-04-17 |  |  |  |  |

| ID | WBS | Task | Duration | Start | Finish | Predecessors | Complete | Total float |
| --- | --- | --- | --- | --- | --- | --- | --- | --- |
| 71 | 4.2.1 | **Screen Design** | 1d | 2020-04-17 | 2020-04-17 |  |  |  |
| 72 | 4.2.1.1 | **Front End** | 1d? | 2020-04-17 | 2020-04-17 |  |  | 0d |
| 73 | 4.2.1.1.1 | **Scorelink Front** | 1d? | 2020-04-17 | 2020-04-17 |  |  | 0d |
| 74 |  | ScoreLink Main Menu | 1d? | 2020-04-17 | 2020-04-17 |  |  |  |
| 75 |  | Brown FS file(Main-Page) | 1d? | 2020-04-17 | 2020-04-17 |  |  |  |
| 76 |  | FS Selection Page (Main-Page) | 1d? | 2020-04-17 | 2020-04-17 |  |  |  |
| 77 |  | List Selected Page (Sub-Page) | 1d? | 2020-04-17 | 2020-04-17 |  |  |  |
| 78 |  | Drag and Drop Note Tile (Pop-up) | 1d? | 2020-04-17 | 2020-04-17 |  |  |  |
| 79 | 4.2.1.1.2 | **Home Page** | 1d? | 2020-04-17 | 2020-04-17 |  |  | 0d |
| 80 |  | Header | 1d? | 2020-04-17 | 2020-04-17 |  |  |  |
| 81 |  | Sidebar | 1d? | 2020-04-17 | 2020-04-17 |  |  |  |
| 82 |  | Footer | 1d? | 2020-04-17 | 2020-04-17 |  |  |  |
| 83 |  | Layout | 1d? | 2020-04-17 | 2020-04-17 |  |  |  |
| 84 |  | Register Page | 1d | 2020-04-17 | 2020-04-17 |  |  | 0d |
| 85 |  | Login Page | 1d | 2020-04-17 | 2020-04-17 |  |  | 0d |
| 86 | 4.2.1.1.5 | **Forgot Password** | 1d? | 2020-04-17 | 2020-04-17 |  |  | 0d |
| 87 |  | Mail Reset Password | 1d? | 2020-04-17 | 2020-04-17 |  |  |  |
| 88 | 4.2.1.1.6 | **User Profile Page** | 1d? | 2020-04-17 | 2020-04-17 |  |  | 0d |
| 89 |  | Edit User Profile | 1d? | 2020-04-17 | 2020-04-17 |  |  |  |
| 90 | 4.2.1.1.7 | **Subscription Plan Page** | 1d? | 2020-04-17 | 2020-04-17 |  |  | 0d |
| 91 |  | Payment Gateway | 1d? | 2020-04-17 | 2020-04-17 |  |  |  |
| 92 | 4.2.1.2 | **Back End (Admin)** | 1d | 2020-04-17 | 2020-04-17 |  |  |  |
| 93 | 4.2.1.2.1 | **User Profile List** | 1d | 2020-04-17 | 2020-04-17 |  |  |  |
| 94 |  | Edit User Profile | 1d | 2020-04-17 | 2020-04-17 |  |  |  |
| 95 |  | Renew Subscription | 1d | 2020-04-17 | 2020-04-17 |  |  |  |
| 96 |  | Screen Action Definition | 1d | 2020-04-17 | 2020-04-17 |  |  | 0d |
| 97 | 4.2.3 | **Report/Form Design** | 1d? | 2020-04-17 | 2020-04-17 |  |  | 0d |
| 98 |  | Report/Form List | 1d | 2020-04-17 | 2020-04-17 |  |  |  |
| 99 |  | Report/Form Overview | 1d | 2020-04-17 | 2020-04-17 |  |  |  |
| 100 |  | Report/Form Layout | 1d? | 2020-04-17 | 2020-04-17 |  |  |  |
| 101 |  | Report/Form Output Item Definition | 1d | 2020-04-17 | 2020-04-17 |  |  |  |
| 102 | 4.2.4 | **Table/File Design** | 1d? | 2020-04-17 | 2020-04-17 |  |  | 0d |
| 103 |  | Table/File List | 1d | 2020-04-17 | 2020-04-17 |  |  |  |
| 104 |  | Table/File Item Definition | 1d? | 2020-04-17 | 2020-04-17 |  |  |  |
| 105 |  | CRUD Diagram | 1d | 2020-04-17 | 2020-04-17 |  |  |  |
| 106 | 4.2.5 | **External Interface Design** | 1d? | 2020-04-17 | 2020-04-17 |  |  | 0d |
| 107 |  | External Interfaces List | 1d? | 2020-04-17 | 2020-04-17 |  |  |  |
| 108 |  | External Interface Item Definition | 1d | 2020-04-17 | 2020-04-17 |  |  |  |
| 109 |  | External Interface Processing Overview | 1d | 2020-04-17 | 2020-04-17 |  |  |  |
| 110 | 4.2.6 | **Design Document Review** | 1d? | 2020-04-17 | 2020-04-17 |  |  | 0d |
| 111 |  | Review Report | 1d? | 2020-04-17 | 2020-04-17 |  |  |  |
| 112 | 4.3 | **Non-functional Requirement Design** | 1d? | 2020-04-17 | 2020-04-17 |  |  | 0d |
| 113 |  | Performance Design | 1d | 2020-04-17 | 2020-04-17 |  |  |  |
| 114 |  | Scalability Design | 1d? | 2020-04-17 | 2020-04-17 |  |  |  |
| 115 |  | Security Design | 1d | 2020-04-17 | 2020-04-17 |  |  |  |
| 116 |  | Consider Operation and Maintenance Policy | 1d | 2020-04-17 | 2020-04-17 |  |  |  |
| 117 |  | Consider Test Policy | 1d | 2020-04-17 | 2020-04-17 |  |  |  |
| 118 | 4.3.6 | **Design Document Review** | 1d | 2020-04-17 | 2020-04-17 |  |  | 0d |
| 119 |  | Review Report | 1d | 2020-04-17 | 2020-04-17 |  |  |  |
| 120 |  | Completion Judgment Review | 1d | 2020-06-03 | 2020-06-03 | 70, 112, 118 |  |  |
| 121 | 5 | **Technical Design (Internal Design)** | 12d | 2020-05-01 | 2020-05-18 |  | 36% |  |
| 122 | 5.1 | **Development Readiness Check** | 5d | 2020-04-16 A | 2020-04-22 |  | 83% | 0d |
| 123 |  | Source Control | 1d | 2020-04-17 A | 2020-04-17 A |  | 100% |  |
| 124 | 5.1.2 | **Component Readiness** | 4d | 2020-04-17 | 2020-04-22 |  | 80% |  |
| 125 |  | Leadtools PDF Pro Trial | 2d | 2020-04-20 A | 2020-04-21 A |  | 100% |  |
| 126 |  | Jquery (Image Cropper) | 1d | 2020-04-16 A | 2020-04-16 A |  | 100% |  |
| 127 |  | Spread Sheet Control | 1d | 2020-04-16 A | 2020-04-16 A |  | 100% |  |
| 128 |  | ABBY Fineread | 1d | 2020-04-16 | 2020-04-16 |  |  |  |
| 129 | 5.2 | **Subscription System** | 1d | 2020-05-01 | 2020-05-01 |  |  |  |
| 130 |  | Design Flow | 1d | 2020-05-01 | 2020-05-01 |  |  |  |
| 131 | 5.2.2 | **Front End** | 1d? | 2020-05-01 | 2020-05-01 |  |  | 0d |
| 132 | 5.2.2.1 | **Home Page** | 1d? | 2020-05-01 | 2020-05-01 |  |  | 0d |
| 133 |  | Header | 1d? | 2020-05-01 | 2020-05-01 |  |  |  |
| 134 |  | Sidebar | 1d? | 2020-05-01 | 2020-05-01 |  |  |  |
| 135 |  | Footer | 1d? | 2020-05-01 | 2020-05-01 |  |  |  |
| 136 |  | Layout | 1d? | 2020-05-01 | 2020-05-01 |  |  |  |
| 137 |  | Confirm Popup | 1d? | 2020-05-01 | 2020-05-01 |  |  |  |
| 138 |  | Alert Popup | 1d? | 2020-05-01 | 2020-05-01 |  |  |  |
| 139 |  | Register Page | 1d | 2020-05-01 | 2020-05-01 |  |  |  |
| 140 |  | Login Page | 1d? | 2020-05-01 | 2020-05-01 |  |  |  |

| ID | WBS | Task | Duration | Start | Finish | Predecessors | Complete | Total float |
| --- | --- | --- | --- | --- | --- | --- | --- | --- |
| 141 | 5.2.2.4 | **Forgot Password** | 1d? | 2020-05-01 | 2020-05-01 |  |  | 0d |
| 142 |  | Mail Reset Password | 1d? | 2020-05-01 | 2020-05-01 |  |  |  |
| 143 | 5.2.2.5 | **User Profile Page** | 1d? | 2020-05-01 | 2020-05-01 |  |  | 0d |
| 144 |  | Edit User Profile | 1d? | 2020-05-01 | 2020-05-01 |  |  |  |
| 145 | 5.2.2.6 | **Subscription Plan Page** | 1d | 2020-05-01 | 2020-05-01 |  |  | 0d |
| 146 |  | Payment Gateway | 1d | 2020-05-01 | 2020-05-01 |  |  |  |
| 147 | 5.2.3 | **Back End (Admin)** | 1d? | 2020-05-01 | 2020-05-01 |  |  | 0d |
| 148 | 5.2.3.1 | **User Profile List** | 1d? | 2020-05-01 | 2020-05-01 |  |  | 0d |
| 149 |  | Edit User Profile | 1d? | 2020-05-01 | 2020-05-01 |  |  |  |
| 150 |  | Renew Subscription | 1d? | 2020-05-01 | 2020-05-01 |  |  |  |
| 151 | 5.3 | **Scorelink Frontend** | 7d | 2020-04-22 A | 2020-04-30 |  | 68% |  |
| 152 | 5.3.1 | **Frontend Architecture design** | 7d | 2020-04-22 A | 2020-04-30 |  | 68% |  |
| 153 |  | Scorelink Mainmenu | 1d | 2020-04-22 A | 2020-04-22 A |  | 100% |  |
| 154 | 5.3.1.2 | **Digitize Step** | 5d | 2020-04-22 A | 2020-04-28 |  | 79% |  |
| 155 |  | Browns and Upload | 1d | 2020-04-22 A | 2020-04-22 A |  | 100% |  |
| 156 | 5.3.1.2.2 | **FS Page Selected(Viewer Page)** | 3d | 2020-04-22 | 2020-04-24 |  | 75% |  |
| 157 |  | Drag and Drop Note Tile | 1d | 2020-04-23 | 2020-04-23 | 24 |  |  |
| 158 | 5.3.1.2.2.2 | **List of Selected Page** | 2d | 2020-04-23 A | 2020-04-24 |  | 99% |  |
| 159 |  | Scan Selected Page (OCR) | 1d | 2020-04-23 A | 2020-04-23 A |  | 100% |  |
| 160 |  | View and Edit Result (Pop-up) | 2d | 2020-04-23 A | 2020-04-24 A | 36 | 100% |  |
| 161 | 5.3.1.2.3 | **Select Scan Patern(Range Specific)** | 1d | 2020-04-27 A | 2020-04-27 |  | 75% |  |
| 162 |  | Draw Selection Area | 1d | 2020-04-27 A | 2020-04-27 A | 30 | 100% |  |
| 163 |  | Scan (Backgroud Process ) | 1d | 2020-04-27 A | 2020-04-27 |  | 50% |  |
| 164 | 5.3.1.3 | **Digitize Excel Import** | 2d | 2020-04-27 A | 2020-04-28 |  | 33% |  |
| 165 |  | Edit FS data | 1d | 2020-04-27 A | 2020-04-27 A |  | 100% |  |
| 166 |  | Browns Standardize Data | 1d | 2020-04-28 | 2020-04-28 |  |  |  |
| 167 |  | Create FS and Export | 1d | 2020-04-28 | 2020-04-28 |  |  |  |
| 168 |  | ScoreLink DB Design | 2d | 2020-04-24 A | 2020-04-27 |  | 90% |  |
| 169 | 5.5 | **Scorelink Backend** | 1d | 2020-05-01 | 2020-05-01 |  |  |  |
| 170 | 5.5.1 | **Backend Architecture design** | 3d | 2020-04-29 | 2020-05-01 |  |  |  |
| 171 | 5.5.1.1 | **Create Tiff** | 5d | 2020-04-23 | 2020-04-29 |  |  | 0d |
| 172 |  | Read from Upload Folder (155) | 1d | 2020-04-23 | 2020-04-23 |  |  |  |
| 173 |  | Covert to Tiff | 1d | 2020-04-29 | 2020-04-29 |  |  |  |
| 174 |  | Return Tiff to Viewer page(156) | 1d | 2020-04-29 | 2020-04-29 |  |  |  |
| 175 | 5.5.1.2 | **Process FS Range Selected** | 2d | 2020-04-30 | 2020-05-01 |  |  |  |
| 176 |  | OCR FS | 2d | 2020-04-30 | 2020-05-01 |  |  |  |
| 177 |  | Return Output For Editing Page | 2d | 2020-04-30 | 2020-05-01 |  |  |  |
| 178 | 6 | **Development and Unit test** | 54d? | 2020-05-05 A | 2020-07-17 |  | 20% | 0d |
| 179 | 6.1 | **Scorelink Frontend** | 28d | 2020-05-05 A | 2020-06-11 |  | 35% | 0d |
| 180 | 6.1.1 | **Upload PDF file Page** | 4d | 2020-05-05 A | 2020-05-08 A |  | 100% |  |
| 181 |  | Insert Data to DB | 1d | 2020-05-05 A | 2020-05-05 A |  | 100% |  |
| 182 |  | Upload PDF file | 1d | 2020-05-06 A | 2020-05-06 A |  | 100% |  |
| 183 |  | Delete Data from DB and Delete File | 2d | 2020-05-07 A | 2020-05-08 A |  | 100% |  |
| 184 | 6.1.2 | **Preview Page and select page** | 7d | 2020-05-13 A | 2020-05-21 |  | 47% | 0d |
| 185 |  | Page Preview | 3d | 2020-05-13 A | 2020-05-15 A |  | 100% |  |
| 186 |  | Select Page | 1d | 2020-05-19 A | 2020-05-19 |  | 30% |  |
| 187 |  | List Page by Financial Type | 1d | 2020-05-20 | 2020-05-20 |  |  |  |
| 188 |  | Delete Select Page From List | 1d | 2020-05-19 | 2020-05-19 |  |  |  |
| 189 |  | See All Results | 1d | 2020-05-21 | 2020-05-21 |  |  |  |
| 190 | 6.1.3 | **Select Pattern for Scan Page** | 4d | 2020-05-22 | 2020-05-27 |  |  | 0d |
| 191 |  | Show Select Page | 2d | 2020-05-22 | 2020-05-25 |  |  |  |
| 192 |  | Save Select Pattern | 3d | 2020-05-25 | 2020-05-27 |  |  |  |
| 193 | 6.1.4 | **Select Scan Area (OCR) Page** | 6d | 2020-05-26 A | 2020-06-02 |  | 75% | 0d |
| 194 |  | Preview Page | 1d | 2020-05-26 A | 2020-05-26 A |  | 100% |  |
| 195 |  | Select Area | 2d | 2020-05-28 A | 2020-05-29 A |  | 100% |  |
| 196 |  | Save Scanned Area | 3d | 2020-05-29 A | 2020-06-02 A |  | 100% |  |
| 197 |  | Send Data to OCR | 2d | 2020-06-01 | 2020-06-02 |  |  |  |
| 198 | 6.1.5 | **Scan Results Mapping Page** | 12d | 2020-05-05 | 2020-05-20 |  |  | 0d |
| 199 |  | Get Results from OCR | 2d | 2020-05-05 | 2020-05-06 |  |  |  |
| 200 |  | Show Results | 1d | 2020-05-07 | 2020-05-07 |  |  |  |
| 201 |  | Merge Row | 1d | 2020-05-08 | 2020-05-08 |  |  |  |
| 202 |  | Insert Row | 1d | 2020-05-11 | 2020-05-11 |  |  |  |
| 203 |  | Delete Row | 1d | 2020-05-12 | 2020-05-12 |  |  |  |
| 204 |  | Edit Value | 1d | 2020-05-13 | 2020-05-13 |  |  |  |
| 205 |  | Export Excel File | 2d | 2020-05-15 | 2020-05-18 |  |  |  |
| 206 |  | Check Amount And Mapping Account Title | 2d | 2020-05-19 | 2020-05-20 |  |  |  |
| 207 | 6.1.6 | **See results and Edit Page** | 8d | 2020-06-02 | 2020-06-11 |  |  |  |
| 208 |  | Export File | 1d | 2020-06-02 | 2020-06-02 |  |  |  |
| 209 |  | Edit Value | 1d | 2020-06-03 | 2020-06-03 |  |  |  |
| 210 |  | Check Amount And Mapping Account Title | 1d | 2020-06-04 | 2020-06-04 |  |  |  |

| ID | WBS | Task | Duration | Start | Finish | Predecessors | Complete | Total float |
| --- | --- | --- | --- | --- | --- | --- | --- | --- |
| 211 | 6.2 | **Scorelink Backend** | 28d | 2020-05-12 A | 2020-06-18 |  | 16% |  |
| 212 | 6.2.1 | **Upload PDF file Page** | 3d | 2020-05-14 | 2020-05-18 |  | 99% |  |
| 213 |  | Convert PDF TO Tiff (New) | 4d | 2020-05-12 A | 2020-05-15 A | 180 | 100% |  |
| 214 | 6.2.2 | **Select Scan and Edit Result Page** | 6d | 2020-05-18 A | 2020-05-25 |  | 50% | 0d |
| 215 |  | View Image -> GetImageByURL (New) | 3d | 2020-05-18 A | 2020-05-20 A | 185 | 100% |  |
| 216 |  | CreateMultiTiff From Selected Page (NEW) | 3d | 2020-05-21 | 2020-05-25 | 187 |  |  |
| 217 | 6.2.3 | **Select Pattern for Scan Page** | 7d | 2020-05-26 | 2020-06-03 |  |  | 0d |
| 218 |  | View Image -> GetImageByURL Only Selected Page (New) | 3d | 2020-05-26 | 2020-05-28 | 191 |  |  |
| 219 |  | Prepare OCR Parameter (Path,Pattern,AccProhibit,Amount) | 1d | 2020-05-29 | 2020-05-29 |  |  |  |
| 220 |  | Abby fucntion for Image Processing (Noise Removing) New | 3d | 2020-06-01 | 2020-06-03 |  |  |  |
| 221 | 6.2.4 | **Select Scan Area (OCR) Page** | 17d | 2020-05-27 | 2020-06-18 |  |  | 0d |
| 222 |  | View Image -> GetImageByURL Only Selected Page (New) | 1d | 2020-05-27 | 2020-05-27 | 194 |  |  |
| 223 | 6.2.4.2 | **Exceute OCR (New)** | 12d | 2020-06-03 | 2020-06-18 |  |  | 0d |
| 224 |  | Load and Setting ABBY OCR | 3d | 2020-06-03 | 2020-06-05 | 197 |  |  |
| 225 |  | Load ABBY Dic | 2d | 2020-06-11 | 2020-06-12 |  |  |  |
| 226 |  | Image Reconigtion and Save Result | 5d | 2020-06-12 | 2020-06-18 |  |  |  |
| 227 | 6.2.5 | **Scan Results Mapping Page** | 16d | 2020-05-18 | 2020-06-08 |  |  | 0d |
| 228 |  | Spread Sheet Configuration by Category | 3d | 2020-05-18 | 2020-05-20 |  |  |  |
| 229 |  | Return OCR Result | 2d | 2020-05-19 | 2020-05-20 | 205 |  |  |
| 230 | 6.2.5.3 | **Check Value** | 8d | 2020-05-21 | 2020-06-01 |  |  | 0d |
| 231 |  | Prepare sugguess word logic (Combobox) | 2d | 2020-05-21 | 2020-05-22 |  |  |  |
| 232 |  | Highlight Text | 1d | 2020-05-25 | 2020-05-25 |  |  |  |
| 233 |  | CheckAmount | 2d | 2020-05-26 | 2020-05-27 |  |  |  |
| 234 |  | Convert OCR Result (Mapping Dic) | 3d | 2020-05-28 | 2020-06-01 | 206 |  |  |
| 235 |  | Merge Row | 2d | 2020-06-05 | 2020-06-08 |  |  |  |
| 236 | 6.2.6 | **See results and Edit Page** | 2d | 2020-06-09 | 2020-06-10 |  |  | 0d |
| 237 |  | Export Result | 2d | 2020-06-09 | 2020-06-10 |  |  |  |
| 238 | 6.3 | **Subscription System** | 13d? | 2020-07-01 | 2020-07-17 |  |  | 0d |
| 239 |  | Design Flow | 3d | 2020-07-01 | 2020-07-03 |  |  |  |
| 240 | 6.3.2 | **Front End** | 8d? | 2020-07-06 | 2020-07-15 | 239 |  | 0d |
| 241 |  | Home Page | 1d | 2020-07-06 | 2020-07-06 |  |  |  |
| 242 |  | Register Page | 2d | 2020-07-07 | 2020-07-08 |  |  |  |
| 243 |  | Login Page | 2d | 2020-07-09 | 2020-07-10 |  |  |  |
| 244 |  | Forgot Password | 2d | 2020-07-10 | 2020-07-13 |  |  |  |
| 245 |  | User Profile Page | 1d? | 2020-07-13 | 2020-07-13 |  |  |  |
| 246 |  | Subscription Plan Page | 3d | 2020-07-13 | 2020-07-15 |  |  |  |
| 247 |  | Back End (Admin) | 3d | 2020-07-15 | 2020-07-17 |  |  |  |
| 248 | 7 | **Test** | 5d | 2020-07-20 | 2020-07-24 |  |  |  |
| 249 |  | Integration Test | 3d | 2020-07-20 | 2020-07-22 |  |  |  |
| 250 |  | Load Test | 1d | 2020-07-23 | 2020-07-23 |  |  |  |
| 251 |  | Security Test | 1d | 2020-07-24 | 2020-07-24 |  |  |  |
| 252 | 8 | **Deployment** | 4d | 2020-07-27 | 2020-07-30 |  |  |  |
| 253 |  | Prepare prod env. | 2d | 2020-07-27 | 2020-07-28 |  |  |  |
| 254 |  | Deployment | 2d | 2020-07-29 | 2020-07-30 |  |  |  |
| 255 |  | Go Live | 1d | 2020-08-03 | 2020-08-03 |  |  |  |

## Version 2 (saved 2020-06-17, file WBS-20200615-Revise#1.mpp)

Note of the change: Merge pull request #63 from tanasitj/EAK

Last finish stays 2020-08-03. Complete tasks 36 → 39.

Added:

| ID | Task | Duration | Start | Finish | Predecessors | Constraint | Resources |
| --- | --- | --- | --- | --- | --- | --- | --- |
| 185 | Convert PDF TO Tiff (Backend) | 1d | 2020-05-05 A | 2020-05-05 A |  |  |  |
| 191 | View Image -> GetImageByURL (Backend) | 24d | 2020-05-13 A | 2020-06-15 A |  |  | Rut |
| 192 | CreateMultiTiff From Selected Page (Backend) | 2d | 2020-06-16 | 2020-06-17 |  |  | Eak |
| 196 | View Image -> GetImageByURL Only Selected Page (Backend) | 2d | 2020-06-22 A | 2020-06-23 A | 191 |  | Rut |
| 197 | Prepare OCR Parameter (Path,Pattern,AccProhibit,Amount - Backend) | 2d | 2020-06-23 A | 2020-06-24 |  |  | Eak |
| 198 | **Create Abby fucntion for OCR** | 6d | 2020-06-17 | 2020-06-24 |  |  | Tor |
| 206 | View Image -> GetImageByURL Only Selected Page (BACKEND) | 2d | 2020-06-22 A | 2020-06-24 | 196 | finish no earlier than 2020-06-23 | Rut |
| 209 | **Spread Sheet Configuration by Category** | 4d | 2020-06-19 A | 2020-06-24 |  |  | Rut |
| 215 | Prepare suggest word logic (Combobox) | 2d | 2020-06-23 | 2020-06-24 |  |  | Rut |

Removed: 189 See All Results; 200 Show Results; 206 Check Amount And Mapping Account Title; 208 Export File; 209 Edit Value; 211 Scorelink Backend; 212 Upload PDF file Page; 213 Convert PDF TO Tiff (New); 214 Select Scan and Edit Result Page; 215 View Image -> GetImageByURL (New); 216 CreateMultiTiff From Selected Page (NEW); 217 Select Pattern for Scan Page; 218 View Image -> GetImageByURL Only Selected Page (New); 219 Prepare OCR Parameter (Path,Pattern,AccProhibit,Amount); 220 Abby fucntion for Image Processing (Noise Removing) New; 221 Select Scan Area (OCR) Page; 222 View Image -> GetImageByURL Only Selected Page (New); 223 Exceute OCR (New); 226 Image Reconigtion and Save Result; 227 Scan Results Mapping Page; 228 Spread Sheet Configuration by Category; 229 Return OCR Result; 230 Check Value; 231 Prepare sugguess word logic (Combobox); 235 Merge Row; 236 See results and Edit Page; 237 Export Result

Changed:

| ID | Task | Start | Finish | Duration | Complete | Total float | Predecessors | Other |
| --- | --- | --- | --- | --- | --- | --- | --- | --- |
| 62 | **Functional Design (External Design)** | 2020-04-17 → 2020-03-04 (-44d) | 2020-04-30 → 2020-06-03 (+34d) | 10d → 66d? |  | none → 0d |  |  |
| 63 | **System Architectural Design** | 2020-04-17 → 2020-03-04 (-44d) | 2020-04-17 → 2020-03-04 (-44d) |  |  | 9d → 108d |  |  |
| 64 | Hardware Configuration Diagram | 2020-04-17 → 2020-03-04 (-44d) | 2020-04-17 → 2020-03-04 (-44d) |  |  | 9d → 108d |  |  |
| 65 | Software Configuration Diagram | 2020-04-17 → 2020-03-04 (-44d) | 2020-04-17 → 2020-03-04 (-44d) |  |  | 9d → 108d |  |  |
| 66 | Network Configuration Diagram | 2020-04-17 → 2020-03-04 (-44d) | 2020-04-17 → 2020-03-04 (-44d) |  |  | 9d → 108d |  |  |
| 67 | Application Function Design | 2020-04-17 → 2020-03-04 (-44d) | 2020-04-17 → 2020-03-04 (-44d) |  |  | 9d → 108d |  |  |
| 68 | **Design Document Review** | 2020-04-17 → 2020-03-04 (-44d) | 2020-04-17 → 2020-03-04 (-44d) |  |  | 9d → 108d |  |  |
| 69 | Review Sheet | 2020-04-17 → 2020-03-04 (-44d) | 2020-04-17 → 2020-03-04 (-44d) |  |  | 9d → 108d |  |  |
| 112 | **Non-functional Requirement Design** | 2020-04-17 → 2020-03-04 (-44d) | 2020-04-17 → 2020-03-04 (-44d) |  |  |  |  |  |
| 113 | Performance Design | 2020-04-17 → 2020-03-04 (-44d) | 2020-04-17 → 2020-03-04 (-44d) |  |  |  |  |  |
| 114 | Scalability Design | 2020-04-17 → 2020-03-04 (-44d) | 2020-04-17 → 2020-03-04 (-44d) |  |  |  |  |  |
| 115 | Security Design | 2020-04-17 → 2020-03-04 (-44d) | 2020-04-17 → 2020-03-04 (-44d) |  |  |  |  |  |
| 116 | Consider Operation and Maintenance Policy | 2020-04-17 → 2020-03-04 (-44d) | 2020-04-17 → 2020-03-04 (-44d) |  |  |  |  |  |
| 117 | Consider Test Policy | 2020-04-17 → 2020-03-04 (-44d) | 2020-04-17 → 2020-03-04 (-44d) |  |  |  |  |  |
| 118 | **Design Document Review** | 2020-04-17 → 2020-03-04 (-44d) | 2020-04-17 → 2020-03-04 (-44d) |  |  |  |  |  |
| 119 | Review Report | 2020-04-17 → 2020-03-04 (-44d) | 2020-04-17 → 2020-03-04 (-44d) |  |  |  |  |  |
| 178 | **Development and Unit test** |  |  |  | 20% → 56% | 0d → 11d |  |  |
| 180 | **Scorelink Frontend** |  | 2020-06-11 → 2020-07-06 (+25d) | 28d → 45d | 35% → 67% | 0d → 20d |  |  |
| 186 | **Preview Page and select page (Leadtools)** |  | 2020-05-21 → 2020-06-17 (+27d) | 7d → 26d | 47% → 95% |  |  | was named Preview Page and select page |
| 187 | Page Preview (Original PDF) |  | 2020-05-15 A → 2020-05-22 A (+7d) | 3d → 8d |  |  |  | was named Page Preview |
| 188 | Select Page (Single) | 2020-05-19 A → 2020-05-28 A (+9d) | 2020-05-19 → 2020-06-02 A (+14d) | 1d → 4d | 30% → 100% |  |  | was named Select Page |
| 189 | List Page by Financial Type | 2020-05-20 → 2020-06-04 A (+15d) | 2020-05-20 → 2020-06-04 A (+15d) |  | 0% → 100% |  |  |  |
| 190 | Delete Select Page From List | 2020-05-19 → 2020-06-08 A (+20d) | 2020-05-19 → 2020-06-08 A (+20d) |  | 0% → 100% |  |  |  |
| 193 | **Select Pattern for Scan Page** | 2020-05-22 → 2020-06-17 A (+26d) | 2020-05-27 → 2020-06-24 (+28d) | 4d → 6d | 0% → 53% |  |  |  |
| 194 | Show Select Page (TIFF) | 2020-05-22 → 2020-06-18 A (+27d) | 2020-05-25 → 2020-06-22 (+28d) | 2d → 3d | 0% → 75% |  | none → 192 | was named Show Select Page |
| 195 | Save Select Pattern | 2020-05-25 → 2020-06-18 A (+24d) | 2020-05-27 → 2020-06-19 (+23d) | 3d → 2d | 0% → 80% |  |  |  |
| 199 | Load and Setting ABBY OCR | 2020-06-03 → 2020-06-17 (+14d) | 2020-06-05 → 2020-06-18 (+13d) | 3d → 2d |  |  | 205 → none | resources Eak → none |
| 200 | Load ABBY Dic | 2020-06-11 → 2020-06-22 (+11d) | 2020-06-12 → 2020-06-24 (+12d) | 2d → 3d |  |  |  | resources Eak → none |
| 201 | **Select Scan Area (OCR) Page** |  | 2020-06-02 → 2020-07-01 (+29d) | 6d → 26.2d | 75% → 66% | 0d → 23.8d |  |  |
| 203 | Select Area |  | 2020-05-29 A → 2020-05-29 |  | 100% → 80% |  |  |  |
| 205 | Call OCR (Send data to OCR) | 2020-06-01 → 2020-06-25 (+24d) | 2020-06-02 → 2020-07-01 (+29d) |  |  | none → 23.8d | none → 198 | was named Send Data to OCR |
| 207 | **Scan Results Mapping Page** | 2020-05-05 → 2020-06-18 A (+44d) | 2020-05-20 → 2020-07-03 (+44d) |  | 0% → 15% |  |  |  |
| 208 | Screen view and ocr result | 2020-05-05 → 2020-06-18 (+44d) | 2020-05-06 → 2020-06-19 (+44d) |  |  |  |  | was named Get Results from OCR |
| 210 | Highlight Text | 2020-05-25 → 2020-06-19 A (+25d) | 2020-05-25 → 2020-06-19 (+25d) |  | 0% → 50% |  |  |  |
| 211 | Merge Row | 2020-05-08 → 2020-06-19 A (+42d) | 2020-05-08 → 2020-06-19 (+42d) |  | 0% → 50% |  |  |  |
| 212 | Insert Row | 2020-05-11 → 2020-06-19 A (+39d) | 2020-05-11 → 2020-06-19 (+39d) |  | 0% → 50% |  |  |  |
| 213 | Delete Row | 2020-05-12 → 2020-06-19 A (+38d) | 2020-05-12 → 2020-06-19 (+38d) |  | 0% → 50% |  |  |  |
| 214 | Edit Value | 2020-05-13 → 2020-06-22 A (+40d) | 2020-05-13 → 2020-06-24 (+42d) | 1d → 3d | 0% → 30% |  |  |  |
| 216 | CheckAmount | 2020-05-26 → 2020-06-24 (+29d) | 2020-05-27 → 2020-06-25 (+29d) |  |  |  |  |  |
| 217 | Convert OCR Result (Mapping Dic) | 2020-05-28 → 2020-06-26 (+29d) | 2020-06-01 → 2020-06-30 (+29d) |  |  |  | Check Amount And Mapping Account Title → none |  |
| 218 | Export Excel File | 2020-05-15 → 2020-07-01 (+47d) | 2020-05-18 → 2020-07-03 (+46d) | 2d → 3d |  |  |  |  |
| 219 | **See results and Edit Page** | 2020-06-02 → 2020-07-06 (+34d) | 2020-06-11 → 2020-07-06 (+25d) | 8d → 1d |  | none → 0d |  |  |
| 220 | Check Amount And Mapping Account Title | 2020-06-04 → 2020-07-06 (+32d) | 2020-06-04 → 2020-07-06 (+32d) |  |  |  | none → 218 |  |

## Version 3 (saved 2020-07-01, file WBS-20200630-Revise.mpp)

Note of the change: Merge pull request #64 from tanasitj/EAK

Last finish 2020-08-03 → 2020-08-04 (+1d). Complete tasks 39 → 45.

Added:

| ID | Task | Duration | Start | Finish |
| --- | --- | --- | --- | --- |
| 221 | **Authentication** | 6d | 2020-07-10 | 2020-07-17 |
| 222 | Design | 1d | 2020-07-10 | 2020-07-10 |
| 223 | Check Concurrent | 2d | 2020-07-13 | 2020-07-14 |
| 226 | Log and audit trail | 4d | 2020-07-17 | 2020-07-22 |

Removed: 221 Subscription System; 222 Design Flow; 223 Front End; 224 Home Page; 225 Register Page; 228 User Profile Page; 229 Subscription Plan Page; 230 Back End (Admin)

Changed:

| ID | Task | Start | Finish | Duration | Complete | Total float | Other |
| --- | --- | --- | --- | --- | --- | --- | --- |
| 178 | **Development and Unit test** |  | 2020-07-17 → 2020-07-22 (+5d) | 54d? → 57d? | 56% → 67% | 11d → 9d |  |
| 180 | **Scorelink** |  | 2020-07-06 → 2020-07-17 (+11d) | 45d → 54d | 67% → 70% | 20d → 12d | was named Scorelink Frontend |
| 186 | **Preview Page and select page (Leadtools)** |  |  |  | 95% → 99% |  |  |
| 192 | CreateMultiTiff From Selected Page (Backend) | 2020-06-16 A | 2020-06-17 A |  | 0% → 100% |  |  |
| 193 | **Select Pattern for Scan Page** |  |  |  | 53% → 63% |  |  |
| 194 | Show Select Page (TIFF) |  | 2020-06-22 A |  | 75% → 100% |  |  |
| 197 | Prepare OCR Parameter (Path,Pattern,AccProhibit,Amount - Backend) |  | 2020-06-24 A |  | 80% → 100% |  |  |
| 198 | **Create Abby fucntion for OCR** | 2020-06-17 A |  |  | 0% → 4% |  |  |
| 199 | Load and Setting ABBY OCR | 2020-06-17 A |  |  | 0% → 10% |  |  |
| 201 | **Select Scan Area (OCR) Page** |  |  |  | 66% → 82% | 23.8d → 24.8d |  |
| 203 | Select Area |  | 2020-05-29 A |  | 80% → 100% |  |  |
| 205 | Call OCR (Send data to OCR) | 2020-06-25 A |  |  | 0% → 10% | 23.8d → 24.8d |  |
| 206 | View Image -> GetImageByURL Only Selected Page (BACKEND) |  | 2020-06-24 A |  | 50% → 100% | 28d → none |  |
| 207 | **Scan Results Mapping Page** |  |  |  | 15% → 27% |  |  |
| 208 | Screen view and ocr result | 2020-06-18 A |  |  | 0% → 90% |  |  |
| 209 | **Spread Sheet Configuration by Category** |  |  |  | 41% → 49% |  |  |
| 210 | Highlight Text |  | 2020-06-19 A |  | 50% → 100% |  |  |
| 224 | Login Page | 2020-07-09 → 2020-07-14 (+5d) | 2020-07-10 → 2020-07-15 (+5d) |  |  |  |  |
| 225 | Forgot Password | 2020-07-10 → 2020-07-16 (+6d) | 2020-07-13 → 2020-07-17 (+4d) |  |  |  |  |
| 227 | **Test** | 2020-07-20 → 2020-07-23 (+3d) | 2020-07-24 → 2020-07-29 (+5d) |  |  |  |  |
| 231 | **Deployment** | 2020-07-27 → 2020-07-29 (+2d) | 2020-07-30 → 2020-08-03 (+4d) |  |  | none → 0d |  |
| 232 | Prepare prod env. | 2020-07-27 → 2020-07-29 (+2d) | 2020-07-28 → 2020-07-31 (+3d) | 2d → 3d |  |  |  |
| 233 | Deployment | 2020-07-29 → 2020-07-31 (+2d) | 2020-07-30 → 2020-08-03 (+4d) |  |  |  |  |
| 234 | Go Live | 2020-08-03 → 2020-08-04 (+1d) | 2020-08-03 → 2020-08-04 (+1d) |  |  |  |  |

## Version 4 (saved 2020-07-06, file WBS-20200630-Revise.mpp)

Note of the change: Merge pull request #65 from tanasitj/RUT

Last finish stays 2020-08-04. Complete tasks 45 → 46.

Changed:

| ID | Task | Start | Finish | Complete |
| --- | --- | --- | --- | --- |
| 178 | **Development and Unit test** |  |  | 67% → 69% |
| 180 | **Scorelink** |  |  | 70% → 73% |
| 207 | **Scan Results Mapping Page** |  |  | 27% → 42% |
| 209 | **Spread Sheet Configuration by Category** |  |  | 49% → 66% |
| 212 | Insert Row |  |  | 50% → 90% |
| 213 | Delete Row |  | 2020-06-19 A | 50% → 100% |
| 214 | Edit Value |  |  | 30% → 40% |
| 218 | Export Excel File | 2020-07-01 A |  | 0% → 50% |

## Version 5 (saved 2020-08-03, file WBS-20200722-Revise.mpp)

Note of the change: Create WBS-20200722-Revise.mpp

Last finish 2020-08-04 → 2020-09-04 (+31d). Complete tasks 46 → 50.

Removed: 200 Load ABBY Dic

Changed:

| ID | Task | Start | Finish | Duration | Complete | Total float | Other |
| --- | --- | --- | --- | --- | --- | --- | --- |
| 178 | **Development and Unit test** |  | 2020-07-22 → 2020-08-21 (+30d) | 57d? → 79d? | 69% → 66% | 9d → 0d |  |
| 180 | **Scorelink** |  | 2020-07-17 → 2020-08-14 (+28d) | 54d → 74d | 73% → 67% | 12d → 0d |  |
| 193 | **Select Pattern for Scan Page** | 2020-06-17 A → 2020-06-18 A (+1d) | 2020-06-24 → 2020-07-22 (+28d) | 6d → 25d | 63% → 99% |  |  |
| 195 | Save Select Pattern |  | 2020-06-19 A |  | 80% → 100% |  |  |
| 198 | **Create Abby fucntion for OCR** | 2020-06-17 A → 2020-07-16 A (+29d) | 2020-06-24 → 2020-07-22 A (+28d) | 6d → 5d | 4% → 100% | 0d → none | resources Tor → Eak |
| 199 | Load and Setting ABBY OCR | 2020-06-17 A → 2020-07-16 A (+29d) | 2020-06-18 → 2020-07-22 A (+34d) | 2d → 5d | 10% → 100% |  | resources none → Eak |
| 200 | **Select Scan Area (OCR) Page** |  | 2020-07-01 → 2020-07-31 (+30d) | 26.2d → 49d | 82% → 99% | 24.8d → none |  |
| 202 | Select Area | 2020-05-28 A → 2020-07-23 A (+56d) | 2020-05-29 A → 2020-07-24 A (+56d) |  |  |  |  |
| 203 | Save Scanned Area | 2020-05-29 A → 2020-07-13 A (+45d) | 2020-06-02 A → 2020-07-15 A (+43d) |  |  |  |  |
| 204 | Send data for OCR | 2020-06-25 A → 2020-07-22 A (+27d) | 2020-07-01 → 2020-07-31 A (+30d) | 2d → 5d | 10% → 100% | 24.8d → none | was named Call OCR (Send data to OCR); constraint none → finish no earlier than 2020-07-31 |
| 206 | **Scan Results Mapping Page** |  | 2020-07-03 → 2020-08-05 (+33d) | 12d → 35d | 42% → 59% | 0d → none |  |
| 207 | Screen view and ocr result |  | 2020-06-19 A |  | 90% → 100% |  |  |
| 208 | **Spread Sheet Configuration by Category** |  | 2020-06-24 → 2020-07-29 (+35d) | 4d → 29d | 66% → 85% | 0d → none |  |
| 209 | Highlight Text |  | 2020-06-19 A → 2020-07-29 (+40d) | 1d → 29d | 100% → 90% |  |  |
| 210 | Merge Row |  | 2020-06-19 → 2020-07-29 (+40d) | 1d → 29d | 50% → 90% |  |  |
| 211 | Insert Row |  | 2020-06-19 → 2020-07-22 A (+33d) | 1d → 24d | 90% → 100% |  |  |
| 212 | Delete Row |  | 2020-06-19 A → 2020-07-22 A (+33d) | 1d → 24d |  |  |  |
| 213 | Edit Value |  | 2020-06-24 → 2020-07-29 (+35d) | 3d → 28d | 40% → 50% |  |  |
| 214 | Prepare suggest word logic (Combobox) |  | 2020-06-24 → 2020-07-31 (+37d) | 2d → 29d |  |  |  |
| 215 | CheckAmount |  | 2020-06-25 → 2020-07-31 (+36d) | 2d → 28d |  |  |  |
| 216 | Convert OCR Result (Mapping Dic) | 2020-06-26 → 2020-08-03 (+38d) | 2020-06-30 → 2020-08-05 (+36d) |  |  |  |  |
| 217 | Export Excel File | 2020-07-01 A → 2020-08-05 A (+35d) | 2020-07-03 → 2020-08-05 (+33d) | 3d → 1d | 50% → 0% |  |  |
| 218 | **See results and Edit Page** | 2020-07-06 → 2020-08-06 A (+31d) | 2020-07-06 → 2020-08-07 (+32d) | 1d → 2d |  | 0d → none |  |
| 219 | Check Amount And Mapping Account Title | 2020-07-06 → 2020-08-06 A (+31d) | 2020-07-06 → 2020-08-07 (+32d) | 1d → 2d |  |  |  |
| 220 | **Authentication** | 2020-07-10 → 2020-08-10 (+31d) | 2020-07-17 → 2020-08-14 (+28d) | 6d → 5d |  | 0d → none |  |
| 221 | Design | 2020-07-10 → 2020-08-10 (+31d) | 2020-07-10 → 2020-08-10 (+31d) |  |  |  |  |
| 222 | Check Concurrent | 2020-07-13 → 2020-08-10 (+28d) | 2020-07-14 → 2020-08-11 (+28d) |  |  |  |  |
| 223 | Login Page | 2020-07-14 → 2020-08-11 (+28d) | 2020-07-15 → 2020-08-12 (+28d) |  |  |  |  |
| 224 | Forgot Password | 2020-07-16 → 2020-08-12 (+27d) | 2020-07-17 → 2020-08-14 (+28d) | 2d → 3d |  |  |  |
| 225 | Log and audit trail | 2020-07-17 → 2020-08-17 (+31d) | 2020-07-22 → 2020-08-21 (+30d) | 4d → 5d |  |  |  |
| 226 | **Test** | 2020-07-23 → 2020-08-24 (+32d) | 2020-07-29 → 2020-08-28 (+30d) |  |  |  |  |
| 227 | Integration Test | 2020-07-20 → 2020-08-24 (+35d) | 2020-07-22 → 2020-08-26 (+35d) |  |  |  |  |
| 228 | Load Test | 2020-07-23 → 2020-08-26 (+34d) | 2020-07-23 → 2020-08-27 (+35d) | 1d → 2d |  |  |  |
| 229 | Security Test | 2020-07-24 → 2020-08-27 (+34d) | 2020-07-24 → 2020-08-28 (+35d) | 1d → 2d |  |  |  |
| 230 | **Deployment** | 2020-07-29 → 2020-08-31 (+33d) | 2020-08-03 → 2020-09-03 (+31d) |  |  | 0d → none |  |
| 231 | Prepare prod env. | 2020-07-29 → 2020-09-03 (+36d) | 2020-07-31 → 2020-09-03 (+34d) | 3d → 1d |  |  |  |
| 232 | Deployment | 2020-07-31 → 2020-09-03 (+34d) | 2020-08-03 → 2020-09-03 (+31d) | 2d → 1d |  |  |  |
| 233 | Go Live | 2020-08-04 → 2020-09-04 (+31d) | 2020-08-04 → 2020-09-04 (+31d) |  |  |  |  |
